# Proyecto Caltory

Schedule from MS Project, 2022-01-24 to 2023-04-10, costs in $, A marks actual dates.

## Calendars

- Calendario Proyecto: Mon-Fri 06:00-18:00; Sat-Sun off. Exceptions (off unless hours are given): 2022-03-21 (Festivo), 2022-04-14 to 2022-04-15 (Festivo), 2022-05-30 (Festivo), 2022-06-20 (Festivo), 2022-06-27 (Festivo), 2022-07-04 (Festivo), 2022-07-20 (Festivo), 2022-08-15 (Festivo), 2022-10-17 (Festivo), 2022-11-07 (Festivo), 2022-11-14 (Festivo), 2022-12-08 (Festivo), 2022-12-16 to 2023-01-24 (Vacaciones), 2023-03-20 (Festivo), 2023-04-06 to 2023-04-07 (Festivo).

## Resources

| Resource | Rate | Cost per use |
| --- | --- | --- |
| Sergio Chaparro | 5000 | 10 |
| Santiago Alza | 5000 | 10 |
| Daniel Altamiranda | 5000 | 10 |
| Juan León | 5000 | 10 |
| Word | 75000 | 1000 |
| CSS |  |  |
| Project |  |  |
| LucidChart | 15000 | 10000 |
| StarUML |  |  |
| GitHub | 1000 | 25000 |
| Workbench | 2000 | 10 |
| Excel |  |  |
| PHP |  |  |
| HTML |  |  |
| Visual Studio Code |  |  |
| Hosting |  |  |
| SQL Server |  |  |
| Dominio |  |  |
| Computadora |  |  |
| CSS |  |  |

## Schedule

| ID | WBS | Task | Duration | Start | Finish | Total slack | Constraint |
| --- | --- | --- | --- | --- | --- | --- | --- |
| 1 | 1 | **Subir Commits** | 342.62d | 2022-03-25 | 2023-04-10 | 0d |  |
| 2 | 1.1 | Subir Commits 1 | 1d | 2022-03-25 | 2022-03-25 | 341.62d | start no earlier than 2022-03-25 |
| 3 | 1.2 | Subir Commits 2 | 1d | 2022-04-01 | 2022-04-01 | 334.12d | start no earlier than 2022-04-01 |
| 4 | 1.3 | Subir Commits 3 | 1d | 2022-04-08 | 2022-04-08 | 326.62d | start no earlier than 2022-04-08 |
| 5 | 1.4 | Subir Commits 4 | 1d | 2022-04-18 | 2022-04-18 | 321d | start no earlier than 2022-04-15 |
| 6 | 1.5 | Subir Commits 5 | 1d | 2022-04-22 | 2022-04-22 | 314.62d | start no earlier than 2022-04-22 |
| 7 | 1.6 | Subir Commits 6 | 1d | 2022-04-29 | 2022-04-29 | 307.12d | start no earlier than 2022-04-29 |
| 8 | 1.7 | Subir Commits 7 | 1d | 2022-05-06 | 2022-05-06 | 299.62d | start no earlier than 2022-05-06 |
| 9 | 1.8 | Subir Commits 8 | 1d | 2022-05-13 | 2022-05-13 | 292.12d | start no earlier than 2022-05-13 |
| 10 | 1.9 | Subir Commits 9 | 1d | 2022-05-20 | 2022-05-20 | 284.62d | start no earlier than 2022-05-20 |
| 11 | 1.10 | Subir Commits 10 | 1d | 2022-05-27 | 2022-05-27 | 277.12d | start no earlier than 2022-05-27 |
| 12 | 1.11 | Subir Commits 11 | 1d | 2022-06-03 | 2022-06-03 | 271.12d | start no earlier than 2022-06-03 |
| 13 | 1.12 | Subir Commits 12 | 1d | 2022-06-10 | 2022-06-10 | 263.62d | start no earlier than 2022-06-10 |
| 14 | 1.13 | Subir Commits 13 | 1d | 2022-06-17 | 2022-06-17 | 256.12d | start no earlier than 2022-06-17 |
| 15 | 1.14 | Subir Commits 14 | 1d | 2022-06-24 | 2022-06-24 | 250.12d | start no earlier than 2022-06-24 |
| 16 | 1.15 | Subir Commits 15 | 1d | 2022-07-01 | 2022-07-01 | 244.12d | start no earlier than 2022-07-01 |
| 17 | 1.16 | Subir Commits 16 | 1d | 2022-07-08 | 2022-07-08 | 238.12d | start no earlier than 2022-07-08 |
| 18 | 1.17 | Subir Commits 17 | 1d | 2022-07-15 | 2022-07-15 | 230.62d | start no earlier than 2022-07-15 |
| 19 | 1.18 | Subir Commits 18 | 1d | 2022-07-22 | 2022-07-22 | 224.62d | start no earlier than 2022-07-22 |
| 20 | 1.19 | Subir Commits 19 | 1d | 2022-07-29 | 2022-07-29 | 217.12d | start no earlier than 2022-07-29 |
| 21 | 1.20 | Subir Commits 20 | 1d | 2022-08-05 | 2022-08-05 | 209.62d | start no earlier than 2022-08-05 |
| 22 | 1.21 | Subir Commits 21 | 1d | 2022-08-12 | 2022-08-12 | 202.12d | start no earlier than 2022-08-12 |
| 23 | 1.22 | Subir Commits 22 | 1d | 2022-08-19 | 2022-08-19 | 196.12d | start no earlier than 2022-08-19 |
| 24 | 1.23 | Subir Commits 23 | 1d | 2022-08-26 | 2022-08-26 | 188.62d | start no earlier than 2022-08-26 |
| 25 | 1.24 | Subir Commits 24 | 1d | 2022-09-02 | 2022-09-02 | 181.12d | start no earlier than 2022-09-02 |
| 26 | 1.25 | Subir Commits 25 | 1d | 2022-09-09 | 2022-09-09 | 173.62d | start no earlier than 2022-09-09 |
| 27 | 1.26 | Subir Commits 26 | 1d | 2022-09-16 | 2022-09-16 | 166.12d | start no earlier than 2022-09-16 |
| 28 | 1.27 | Subir Commits 27 | 1d | 2022-09-23 | 2022-09-23 | 158.62d | start no earlier than 2022-09-23 |
| 29 | 1.28 | Subir Commits 28 | 1d | 2022-09-30 | 2022-09-30 | 151.12d | start no earlier than 2022-09-30 |
| 30 | 1.29 | Subir Commits 29 | 1d | 2022-10-07 | 2022-10-07 | 143.62d | start no earlier than 2022-10-07 |
| 31 | 1.30 | Subir Commits 30 | 1d | 2022-10-14 | 2022-10-14 | 136.12d | start no earlier than 2022-10-14 |
| 32 | 1.31 | Subir Commits 31 | 1d | 2022-10-21 | 2022-10-21 | 130.12d | start no earlier than 2022-10-21 |
| 33 | 1.32 | Subir Commits 32 | 1d | 2022-10-28 | 2022-10-28 | 122.62d | start no earlier than 2022-10-28 |
| 34 | 1.33 | Subir Commits 33 | 1d | 2022-11-04 | 2022-11-04 | 115.12d | start no earlier than 2022-11-04 |
| 35 | 1.34 | Subir Commits 34 | 1d | 2022-11-11 | 2022-11-11 | 109.12d | start no earlier than 2022-11-11 |
| 36 | 1.35 | Subir Commits 35 | 1d | 2022-11-18 | 2022-11-18 | 103.12d | start no earlier than 2022-11-18 |
| 37 | 1.36 | Subir Commits 36 | 1d | 2022-11-25 | 2022-11-25 | 95.62d | start no earlier than 2022-11-25 |
| 38 | 1.37 | Subir Commits 37 | 1d | 2022-12-02 | 2022-12-02 | 88.12d | start no earlier than 2022-12-02 |
| 39 | 1.38 | Subir Commits 38 | 1d | 2022-12-09 | 2022-12-09 | 82.12d | start no earlier than 2022-12-09 |
| 40 | 1.39 | Subir Commits 39 | 1d | 2023-01-25 | 2023-01-25 | 75d | start no earlier than 2022-12-16 |
| 41 | 1.40 | Subir Commits 40 | 1d | 2023-01-25 | 2023-01-25 | 75d | start no earlier than 2022-12-23 |
| 42 | 1.41 | Subir Commits 41 | 1d | 2023-01-25 | 2023-01-25 | 75d | start no earlier than 2022-12-30 |
| 43 | 1.42 | Subir Commits 42 | 1d | 2023-01-25 | 2023-01-25 | 75d | start no earlier than 2023-01-06 |
| 44 | 1.43 | Subir Commits 43 | 1d | 2023-01-25 | 2023-01-25 | 75d | start no earlier than 2023-01-13 |
| 45 | 1.44 | Subir Commits 44 | 1d | 2023-01-25 | 2023-01-25 | 75d | start no earlier than 2023-01-20 |
| 46 | 1.45 | Subir Commits 45 | 1d | 2023-01-27 | 2023-01-27 | 71.62d | start no earlier than 2023-01-27 |
| 47 | 1.46 | Subir Commits 46 | 1d | 2023-02-03 | 2023-02-03 | 64.12d | start no earlier than 2023-02-03 |
| 48 | 1.47 | Subir Commits 47 | 1d | 2023-02-10 | 2023-02-10 | 56.62d | start no earlier than 2023-02-10 |
| 49 | 1.48 | Subir Commits 48 | 1d | 2023-02-17 | 2023-02-17 | 49.12d | start no earlier than 2023-02-17 |
| 50 | 1.49 | Subir Commits 49 | 1d | 2023-02-24 | 2023-02-24 | 41.62d | start no earlier than 2023-02-24 |
| 51 | 1.50 | Subir Commits 50 | 1d | 2023-03-03 | 2023-03-03 | 34.12d | start no earlier than 2023-03-03 |
| 52 | 1.51 | Subir Commits 51 | 1d | 2023-03-10 | 2023-03-10 | 26.62d | start no earlier than 2023-03-10 |
| 53 | 1.52 | Subir Commits 52 | 1d | 2023-03-17 | 2023-03-17 | 19.12d | start no earlier than 2023-03-17 |
| 54 | 1.53 | Subir Commits 53 | 1d | 2023-03-24 | 2023-03-24 | 13.12d | start no earlier than 2023-03-24 |
| 55 | 1.54 | Subir Commits 54 | 1d | 2023-03-31 | 2023-03-31 | 5.62d | start no earlier than 2023-03-31 |
| 56 | 1.55 | Subir Commits 55 | 1d | 2023-04-10 | 2023-04-10 | 0d | start no earlier than 2023-04-07 |

| ID | WBS | Task | Duration | Start | Finish | Predecessors | Complete | Constraint | Resources | Work | Actual work | Cost | Actual cost |
| --- | --- | --- | --- | --- | --- | --- | --- | --- | --- | --- | --- | --- | --- |
| 57 | 2 | **1. Análisis:** | 33d | 2022-01-24 A | 2022-02-23 A |  | 100% |  |  | 352h | 352h | 1,760,110 | 1,760,110 |
| 58 | 2.1 | **1.1 Componente Metodológico.** | 18d | 2022-01-24 A | 2022-02-09 A |  | 100% |  |  | 232h | 232h | 1,160,080 | 1,160,080 |
| 59 | 2.1.1 | 1.1.1 Nombre del proyecto | 2d | 2022-01-24 A | 2022-01-25 A |  | 100% |  | Sergio Chaparro | 16h | 16h | 80,010 | 80,010 |
| 60 | 2.1.2 | 1.1.2 Objetivo general. | 3d | 2022-01-25 A | 2022-01-27 A | 59 | 100% |  | Sergio Chaparro; Santiago Alza | 48h | 48h | 240,020 | 240,020 |
| 61 | 2.1.3 | 1.1.3 Objetivos específicos. | 3d | 2022-01-25 A | 2022-01-27 A | 59 | 100% | start no earlier than 2022-01-25 | Juan León | 24h | 24h | 120,010 | 120,010 |
| 62 | 2.1.4 | 1.1.4 Planteamiento del problema. | 4d | 2022-01-27 A | 2022-02-01 A | 61 | 100% |  | Sergio Chaparro; Santiago Alza | 64h | 64h | 320,020 | 320,020 |
| 63 | 2.1.5 | 1.1.5 Alcance del proyecto. | 5d | 2022-02-01 A | 2022-02-04 A | 62 | 100% |  | Daniel Altamiranda; Juan León | 80h | 80h | 400,020 | 400,020 |
| 64 | 2.1.6 | 1.1.6 Justificación. | 4d | 2022-02-04 A | 2022-02-09 A | 63 | 100% |  |  |  |  |  |  |
| 65 | 2.2 | **1.2 Levantamiento de información.** | 15d | 2022-02-09 A | 2022-02-23 A | 58 | 100% |  |  | 120h | 120h | 600,030 | 600,030 |
| 66 | 2.2.1 | 1.2.1 Entrevistas. | 4d | 2022-02-09 A | 2022-02-11 A |  | 100% |  | Santiago Alza | 32h | 32h | 160,010 | 160,010 |
| 67 | 2.2.2 | 1.2.2 Observación. | 5d | 2022-02-11 A | 2022-02-17 A | 66 | 100% |  | Sergio Chaparro | 40h | 40h | 200,010 | 200,010 |
| 68 | 2.2.3 | 1.2.3 Encuestas. | 6d | 2022-02-17 A | 2022-02-23 A | 67 | 100% |  | Daniel Altamiranda | 48h | 48h | 240,010 | 240,010 |
| 69 | 3 | **2. Planeación:** | 52d | 2022-02-23 A | 2022-04-13 A | 57 | 100% |  |  | 640h | 640h | 3,736,250 | 3,736,250 |
| 70 | 3.1 | **2.1 Informe de Requerimientos (Estándar IEEE 830).** | 12d | 2022-02-23 A | 2022-03-07 A | 57 | 100% |  |  | 136h | 136h | 908,030 | 908,030 |
| 71 | 3.1.1 | 2.1.1 Requerimientos funcionales. | 5d | 2022-02-23 A | 2022-02-28 A | 57 | 100% |  | Daniel Altamiranda; Word | 40h | 40h | 276,010 | 276,010 |
| 72 | 3.1.2 | 2.1.2 Requerimientos No funcionales. | 5d | 2022-02-23 A | 2022-02-28 A | 57 | 100% |  | Juan León; Word | 40h | 40h | 276,010 | 276,010 |
| 73 | 3.1.3 | 2.1.3 Formato SRS | 7d | 2022-02-28 A | 2022-03-07 A | 72 | 100% |  | Sergio Chaparro; Word | 56h | 56h | 356,010 | 356,010 |
| 74 | 3.2 | **2.2 Mapa de procesos.** | 8d | 2022-03-07 A | 2022-03-14 A | 70 | 100% |  |  | 64h | 64h | 370,020 | 370,020 |
| 75 | 3.2.1 | 2.2.1 Mapa de procesos. | 4d | 2022-03-07 A | 2022-03-09 A | 70 | 100% |  | LucidChart; Santiago Alza | 32h | 32h | 185,010 | 185,010 |
| 76 | 3.2.2 | 2.2.2 Diagrama de flujo de proceso BPMN | 4d | 2022-03-09 A | 2022-03-14 A | 75 | 100% |  | Juan León; LucidChart | 32h | 32h | 185,010 | 185,010 |
| 77 | 3.3 | **2.3 Diagramas UML** | 5d | 2022-03-14 A | 2022-03-17 A | 74 | 100% |  |  | 48h | 48h | 391,030 | 391,030 |
| 78 | 3.3.1 | **2.3.1 Casos de uso** | 5d | 2022-03-14 A | 2022-03-17 A | 74 | 100% |  |  | 16h | 16h | 206,010 | 206,010 |
| 79 | 3.3.1.1 | Diagrama de casos de uso | 2d | 2022-03-14 A | 2022-03-15 A | 74 | 100% |  | Sergio Chaparro; LucidChart | 16h | 16h | 105,010 | 105,010 |
| 80 | 3.3.1.2 | Especificaciones de casos de uso | 2d | 2022-03-14 A | 2022-03-15 A |  | 100% |  | LucidChart |  |  | 25,000 | 25,000 |
| 81 | 3.3.1.3 | Formato de casos de uso extendido | 3d | 2022-03-15 A | 2022-03-17 A | 79 | 100% |  | Word |  |  | 76,000 | 76,000 |
| 82 | 3.3.2 | 2.3.2 Diagrama de clases | 2d | 2022-03-15 A | 2022-03-17 A | 79 | 100% |  | Juan León; StarUML | 16h | 16h | 80,010 | 80,010 |
| 83 | 3.3.3 | 2.3.3 Diagrama de distribución | 2d | 2022-03-15 A | 2022-03-17 A | 79 | 100% |  | Sergio Chaparro; LucidChart | 16h | 16h | 105,010 | 105,010 |

| ID | WBS | Task | Duration | Start | Finish | Predecessors | Complete | Remaining | Total slack | Free slack | Constraint | Resources | Work | Actual work | Cost | Actual cost |
| --- | --- | --- | --- | --- | --- | --- | --- | --- | --- | --- | --- | --- | --- | --- | --- | --- |
| 84 | 3.4 | **2.4 Versionamiento** | 6d | 2022-03-17 A | 2022-03-24 A | 78 | 100% |  |  |  |  |  | 32h | 32h | 238,020 | 238,020 |
| 85 | 3.4.1 | 2.4.1 Crear cuentas GitHub | 2d | 2022-03-17 A | 2022-03-22 A | 78 | 100% |  |  |  |  | GitHub |  |  | 26,000 | 26,000 |
| 86 | 3.4.2 | 2.4.2 Crear repositorio | 1d | 2022-03-22 A | 2022-03-22 A | 85 | 100% |  |  |  |  | GitHub; Santiago Alza | 8h | 8h | 66,010 | 66,010 |
| 87 | 3.4.3 | 2.4.3 Commits | 3d | 2022-03-22 A | 2022-03-24 A | 86 | 100% |  |  |  |  | Daniel Altamiranda; GitHub | 24h | 24h | 146,010 | 146,010 |
| 88 | 3.5 | **2.5 Modelado de base de datos** | 9d | 2022-03-24 A | 2022-04-01 A | 84 | 100% |  |  |  |  |  | 104h | 104h | 549,070 | 549,070 |
| 89 | 3.5.1 | **2.5.1 Modelo Entidad Relación.** | 4d | 2022-03-24 A | 2022-03-29 A | 84 | 100% |  |  |  |  |  | 32h | 32h | 185,010 | 185,010 |
| 90 | 3.5.1.1 | MER | 4d | 2022-03-24 A | 2022-03-29 A | 84 | 100% |  |  |  | start no earlier than 2022-03-07 | Sergio Chaparro; LucidChart | 32h | 32h | 185,010 | 185,010 |
| 91 | 3.5.2 | **2.5.2 Normalización** | 3d | 2022-03-29 A | 2022-03-31 A | 90 | 100% |  |  |  |  |  | 64h | 64h | 320,030 | 320,030 |
| 92 | 3.5.2.1 | Primera forma normal | 2d | 2022-03-29 A | 2022-03-30 A | 90 | 100% |  |  |  |  | Excel; Santiago Alza | 16h | 16h | 80,010 | 80,010 |
| 93 | 3.5.2.2 | Segundo forma normal | 3d | 2022-03-29 A | 2022-03-31 A | 90 | 100% |  |  |  |  | Daniel Altamiranda; Excel | 24h | 24h | 120,010 | 120,010 |
| 94 | 3.5.2.3 | Tercera forma normal | 3d | 2022-03-29 A | 2022-03-31 A | 90 | 100% |  |  |  |  | Excel; Juan León | 24h | 24h | 120,010 | 120,010 |
| 95 | 3.5.3 | **2.5.3 Modelo relacional** | 2d | 2022-03-31 A | 2022-04-01 A | 94 | 100% |  |  |  |  |  | 8h | 8h | 44,030 | 44,030 |
| 96 | 3.5.3.1 | Modelo relacional workbench | 1d | 2022-03-31 A | 2022-04-01 A | 94 | 100% |  |  |  |  | Workbench |  |  | 2,010 | 2,010 |
| 97 | 3.5.3.2 | Diccionario de datos | 1d | 2022-04-01 A | 2022-04-01 A | 96 | 100% |  |  |  |  | Sergio Chaparro; Workbench | 8h | 8h | 42,020 | 42,020 |
| 98 | 3.6 | **2.6 Prototipo no funcional inicial** | 3d | 2022-04-01 A | 2022-04-05 A | 88 | 100% |  |  |  |  |  | 24h | 24h | 120,010 | 120,010 |
| 99 | 3.6.1 | 2.6.1 Mockup. | 3d | 2022-04-01 A | 2022-04-05 A | 88 | 100% |  |  |  |  | CSS; Santiago Alza | 24h | 24h | 120,010 | 120,010 |
| 100 | 3.7 | **2.7 Cronograma** | 9d | 2022-04-05 A | 2022-04-13 A | 99 | 100% |  |  |  |  |  | 232h | 232h | 1,160,070 | 1,160,070 |
| 101 | 3.7.1 | 2.7.1 Recursos | 4d | 2022-04-05 A | 2022-04-08 A | 99 | 100% |  |  |  |  | Santiago Alza | 32h | 32h | 160,010 | 160,010 |
| 102 | 3.7.2 | 2.7.2 Presupuesto | 4d | 2022-04-05 A | 2022-04-08 A | 99 | 100% |  |  |  |  | Daniel Altamiranda | 32h | 32h | 160,010 | 160,010 |
| 103 | 3.7.3 | 2.7.3 Personal | 4d | 2022-04-05 A | 2022-04-08 A | 99 | 100% |  |  |  |  | Sergio Chaparro; Daniel Altamiranda; Juan León; Santiago Alza | 128h | 128h | 640,040 | 640,040 |
| 104 | 3.7.4 | 2.7.4 Diagrama de Gantt | 5d | 2022-04-08 A | 2022-04-13 A | 103 | 100% |  |  |  |  | Juan León; Project | 40h | 40h | 200,010 | 200,010 |
| 105 | 4 | **3. Ejecución:** | 203d | 2022-04-19 A | 2022-11-03 | 69 | 86% | 28.25d | 53.12d | 0d |  |  | 1408h | 1200h | 7,215,150 | 6,175,110 |
| 106 | 4.1 | **3.1 Base de Datos.** | 74.75d | 2022-04-19 A | 2022-06-30 | 69 | 94% | 4.2d |  |  |  |  | 200h | 200h | 1,000,020 | 1,000,020 |
| 107 | 4.1.1 | 3.1.1 Construcción de la Base de Datos. | 15d | 2022-04-19 A | 2022-05-03 A | 69 | 100% |  |  |  |  | Sergio Chaparro; Hosting [0.1%] | 120h | 120h | 600,010 | 600,010 |
| 108 | 4.1.2 | 3.1.2 Datos insertados en la Base de Datos. | 10d | 2022-05-03 A | 2022-05-11 A | 107 | 100% |  |  |  |  | Daniel Altamiranda; Hosting [0.1%] | 80h | 80h | 400,010 | 400,010 |
| 109 | 4.1.3 | 3.1.3 Consultas y Joins en la Base de Datos. | 15d | 2022-05-11 A | 2022-05-25 | 108 | 85% | 2.25d | 0d |  |  | Hosting [0.1%] |  |  |  |  |

| ID | WBS | Task | Duration | Start | Finish | Predecessors | Complete | Remaining | Total slack | Free slack | Resources | Work | Actual work | Cost | Actual cost |
| --- | --- | --- | --- | --- | --- | --- | --- | --- | --- | --- | --- | --- | --- | --- | --- |
| 110 | 4.2 | **3.2 Prototipo no funcional** | 15d | 2022-05-25 A | 2022-06-09 | 109 | 99% | 0d | 201.12d |  |  | 120h | 120h | 600,010 | 600,010 |
| 111 | 4.2.1 | Prototipo CSS | 15d | 2022-05-25 A | 2022-06-09 |  | 99% | 0d | 201.12d |  | HTML; PHP; Santiago Alza; Visual Studio Code; CSS | 120h | 120h | 600,010 | 600,010 |
| 112 | 4.3 | **3.3 Codificación y manejo de CRUD.** | 122d | 2022-06-09 A | 2022-10-10 A | 111 | 100% |  |  |  |  | 880h | 880h | 4,575,080 | 4,575,080 |
| 113 | 4.3.1 | 3.3.1 Conexión base de datos. | 10d | 2022-06-09 A | 2022-06-21 A | 111 | 100% |  |  |  | Juan León; Hosting [0.1%] | 80h | 80h | 400,010 | 400,010 |
| 114 | 4.3.2 | 3.3.2 Crud funcional módulos del sistema. | 25d | 2022-06-21 A | 2022-07-18 A | 113 | 100% |  |  |  | Daniel Altamiranda | 200h | 200h | 1,000,010 | 1,000,010 |
| 115 | 4.3.3 | 3.2.1 Caso de uso 1 | 12d | 2022-07-18 A | 2022-07-29 A | 114 | 100% |  |  |  | Juan León; LucidChart | 96h | 96h | 505,010 | 505,010 |
| 116 | 4.3.4 | 3.2.2 Caso de uso 2 | 12d | 2022-07-29 A | 2022-08-10 A | 115 | 100% |  |  |  | Daniel Altamiranda; LucidChart | 96h | 96h | 505,010 | 505,010 |
| 117 | 4.3.5 | 3.2.3 Caso de uso 3 | 12d | 2022-08-10 A | 2022-08-23 A | 116 | 100% |  |  |  | LucidChart; Sergio Chaparro | 96h | 96h | 505,010 | 505,010 |
| 118 | 4.3.6 | 3.2.4 Caso de uso 4 | 12d | 2022-08-23 A | 2022-09-02 A | 117 | 100% |  |  |  | LucidChart |  |  | 25,000 | 25,000 |
| 119 | 4.3.7 | 3.2.5 Caso de uso 5 | 12d | 2022-09-02 A | 2022-09-14 A | 118 | 100% |  |  |  | LucidChart; Santiago Alza | 96h | 96h | 505,010 | 505,010 |
| 120 | 4.3.8 | 3.2.6 Caso de uso 6 | 20d | 2022-09-14 A | 2022-10-03 A | 119 | 100% |  |  |  | Juan León; LucidChart | 160h | 160h | 825,010 | 825,010 |
| 121 | 4.3.9 | 3.2.7 Caso de uso 7 | 7d | 2022-10-03 A | 2022-10-10 A | 120 | 100% |  |  |  | Daniel Altamiranda; LucidChart | 56h | 56h | 305,010 | 305,010 |
| 122 | 4.4 | **3-4 Pruebas** | 26d | 2022-10-10 | 2022-11-03 | 121 |  |  | 53.12d |  |  | 208h |  | 1,040,040 |  |
| 123 | 4.4.1 | Pruebas Unitarias | 6d | 2022-10-10 | 2022-10-14 | 121 |  |  | 53.62d | 0d | Sergio Chaparro | 48h |  | 240,010 |  |
| 124 | 4.4.2 | Pruebas Caja Negra | 6d | 2022-10-14 | 2022-10-21 | 123 |  |  | 53.62d | 0d | Daniel Altamiranda | 48h |  | 240,010 |  |
| 125 | 4.4.3 | Pruebas Caja Blanca | 6d | 2022-10-21 | 2022-10-27 | 124 |  |  | 53.62d | 0d | Santiago Alza | 48h |  | 240,010 |  |
| 126 | 4.4.4 | Documentación | 8d | 2022-10-27 | 2022-11-03 | 125 |  |  | 53.12d |  | Juan León | 64h |  | 320,010 |  |
| 127 | 5 | **4. Evaluación** | 66d | 2022-11-03 | 2023-02-16 | 105 |  |  | 51.12d |  |  | 368h |  | 2,600,070 |  |
| 128 | 5.1 | 4.1 Modelo De Calidad | 10d | 2022-11-03 | 2022-11-16 | 105 |  |  | 53.12d | 0d |  |  |  |  |  |
| 129 | 5.2 | **4.2 Informes** | 7d | 2022-11-16 | 2022-11-22 | 128 |  |  | 53.12d |  |  | 112h |  | 620,020 |  |
| 130 | 5.2.1 | Informe de costos | 7d | 2022-11-16 | 2022-11-22 | 128 |  |  | 100.12d |  | Santiago Alza; Hosting [0.1%]; Dominio [0.1%] | 56h |  | 340,010 |  |
| 131 | 5.2.2 | Informe de migración de datos | 7d | 2022-11-16 | 2022-11-22 | 128 |  |  | 53.12d | 0d | Sergio Chaparro | 56h |  | 280,010 |  |
| 132 | 5.3 | **4.3 Planes** | 21d | 2022-11-22 | 2022-12-13 | 131 |  |  | 53.12d |  |  | 112h |  | 1,260,020 |  |
| 133 | 5.3.1 | Plan de instalación | 7d | 2022-11-22 | 2022-11-29 | 131 |  |  | 53.12d | 0d | Daniel Altamiranda; Computadora [0.1%] | 56h |  | 980,010 |  |
| 134 | 5.3.2 | Plan de respaldo | 7d | 2022-11-29 | 2022-12-06 | 133 |  |  | 53.12d | 0d | Juan León | 56h |  | 280,010 |  |
| 135 | 5.3.3 | Plan de migración | 7d | 2022-12-06 | 2022-12-13 | 134 |  |  | 53.12d | 0d |  |  |  |  |  |

| ID | WBS | Task | Type | Duration | Start | Finish | Predecessors | Total slack | Free slack | Resources | Work | Cost |
| --- | --- | --- | --- | --- | --- | --- | --- | --- | --- | --- | --- | --- |
| 136 | 5.4 | **4.4 Construcción de manuales** |  | 20d | 2022-12-13 | 2023-02-09 | 135 | 53.12d |  |  | 80h | 400,010 |
| 137 | 5.4.1 | 4.4.1 Usuario |  | 10d | 2022-12-13 | 2023-01-31 | 135 | 53.12d | 0d | Santiago Alza | 80h | 400,010 |
| 138 | 5.4.2 | 4.4.2 Operación. |  | 10d | 2023-01-31 | 2023-02-09 | 137 | 53.12d | 0d |  |  |  |
| 139 | 5.5 | 4.5 Diagrama De Distribución Final |  | 5d | 2023-02-09 | 2023-02-14 | 138 | 53.12d | 0d | Sergio Chaparro | 40h | 200,010 |
| 140 | 5.6 | 4.6 Contrato de Desarrollo de Software |  | 3d | 2023-02-14 | 2023-02-16 | 139 | 51.12d | 0d | Juan León | 24h | 120,010 |
| 141 | 6 | Proyecto Terminado al 100% | milestone | 0d | 2023-02-16 | 2023-02-16 | 140 | 51.12d |  |  |  |  |
